# Antibot Ad Arte

Schedule from GanttProject, 2026-04-27 to 2026-05-21.
Prisma
Validazione antiBot WAF Fortinet su collaudo Ad Arte. Ticket PSN aperto subito dopo discovery in modo che la wait corra in parallelo allo sviluppo.

## Calendars

- Project calendar: Mon-Sun working.

## Resources

| Resource |
| --- |
| Dev |
| PSN |

## Schedule

| ID | WBS | Task | Duration | Start | Finish | Predecessors | Resources |
| --- | --- | --- | --- | --- | --- | --- | --- |
| 1 | 1 | Discovery e design | 3d | 2026-04-27 | 2026-04-29 |  | Dev |
| 2 | 2 | Apertura ticket PSN whitelist WAF | 1d | 2026-04-30 | 2026-04-30 | 1 | Dev |
| 3 | 3 | Wait PSN + whitelist applicata | 3d | 2026-05-01 | 2026-05-03 | 2 | PSN |
| 4 | 4 | Build core framework | 5d | 2026-04-30 | 2026-05-04 | 1 | Dev |
| 5 | 5 | **Implementazione BOT** | 6d | 2026-05-07 | 2026-05-12 | 4 |  |
| 6 | 5.1 | HTTP (BOT-1 DoS + BOT-2 ATO) | 5d | 2026-05-07 | 2026-05-11 |  | Dev |
| 7 | 5.2 | Browser (BOT-4 + BOT-5) | 6d | 2026-05-07 | 2026-05-12 |  | Dev |
| 8 | 5.3 | Admin API (BOT-3 Registration) | 5d | 2026-05-07 | 2026-05-11 |  | Dev |
| 9 | 6 | **Infrastruttura e credenziali** | 5d | 2026-05-07 | 2026-05-11 | 4 |  |
| 10 | 6.1 | Estrazione credenziali collaudo | 2d | 2026-05-07 | 2026-05-08 |  | Dev |
| 11 | 6.2 | Provisioning Linode fleet | 3d | 2026-05-11 | 2026-05-13 |  | Dev |
| 12 | 7 | Esecuzione test | 2d | 2026-05-15 | 2026-05-16 | 3, 5, 9 | Dev |
| 13 | 8 | Report e delivery | 3d | 2026-05-19 | 2026-05-21 | 12 | Dev |
